# OSFLETES

Schedule from MS Project, 2012-02-01 to 2013-10-18.
WWW.ZONAVIRTUALPC.TK

## Calendars

- Estándar: Mon-Fri 09:00-13:00, 15:00-19:00; Sat-Sun off.

## Resources

| Resource |
| --- |
| No Asignado |
| Desarrollador I |
| Desarrollador II |
| Administrador Sistema |
| Representante Comercial |
| Consultor Legal |
| Consultor Contable |
| Consultor Marketing |
| Diseñador |
| Desarrollador Android |

## Schedule

| ID | WBS | Task | Duration | Start | Finish | Predecessors | Total slack | Free slack | Constraint | Resources | Work |
| --- | --- | --- | --- | --- | --- | --- | --- | --- | --- | --- | --- |
| 1 | 1 | **OSFLETES** | 447.5d? | 2012-02-01 | 2013-10-18 |  | -245.25d | 0d |  |  | 6043.2h |
| 2 | 1.1 | **Motor de Licitaciones(Iteracion I)** | 86.5d? | 2012-02-01 | 2012-05-31 |  | -245.25d | 0d |  |  | 836.2h |
| 3 | 1.1.1 | **Relevamiento** | 2.75d? | 2012-02-01 | 2012-02-03 |  | -245.25d | 0d |  |  | 43h |
| 4 | 1.1.1.1 | Investigacion del Modelo de Licitacion | 2.75d? | 2012-02-01 | 2012-02-03 |  | -245.25d | 0d | start no earlier than 2012-02-01 | No Asignado [66.7%] | 43h |
| 5 | 1.1.2 | **Analisis Funcional y Tecnico** | 15d? | 2012-02-03 | 2012-02-24 | 3 | -245.25d | 0d |  |  | 316h |
| 6 | 1.1.2.1 | Analisis de la informacion Relevada | 6.75d? | 2012-02-03 | 2012-02-14 |  | -245.25d | 0d | start no earlier than 2012-02-03 | No Asignado [66.7%] | 43h |
| 7 | 1.1.2.2 | Generacion de los Diagramas De Flujos | 12.75d? | 2012-02-06 | 2012-02-22 | 6 | -238.75d | 0d | finish no later than 2012-02-22 | No Asignado [66.7%] | 127h |
| 8 | 1.1.2.3 | Generacion de los Casos de Uso | 7.75d? | 2012-02-14 | 2012-02-23 | 7 | -232d | 0d | finish no later than 2012-02-23 | No Asignado [66.7%] | 119h |
| 9 | 1.1.2.4 | Definicion de las Tecnologias a usar | 1.75d? | 2012-02-23 | 2012-02-24 | 8 | -231.25d | 0d | finish no later than 2012-02-24 | No Asignado [66.7%] | 27h |
| 10 | 1.1.3 | **Diseño** | 43d? | 2012-02-24 | 2012-04-25 | 5 | -231.25d | 0d |  |  | 249.2h |
| 11 | 1.1.3.1 | Diseño de Arquitectura | 6d? | 2012-02-24 | 2012-03-05 |  | -231.25d | 0d | start no earlier than 2012-02-24 | No Asignado [66.7%] | 100h |
| 12 | 1.1.3.2 | Diseño de estructura de datos | 11.75d? | 2012-02-24 | 2012-03-13 |  | -199.25d | 0d | start no earlier than 2012-02-24 | No Asignado [66.7%] | 42.2h |
| 13 | 1.1.3.3 | Diagrama de Clases | 37.75d? | 2012-03-05 | 2012-04-25 | 11 | -230.5d | 0d | finish no later than 2012-04-25 | No Asignado [66.7%] | 107h |
| 14 | 1.1.4 | **Desarrollo** | 56.5d? | 2012-03-14 | 2012-05-31 | 10 | -206d | 0d |  |  | 228h |
| 15 | 1.1.4.1 | **Configuracion de Ambiente de desarrollo** | 32.75d? | 2012-03-14 | 2012-04-27 |  | -210.75d | 0d |  |  | 107h |
| 16 | 1.1.4.1.1 | Conf Servidor de Aplicaciones Apache Tomcat | 1d? | 2012-04-25 | 2012-04-26 |  | -230.5d | 0d | start no earlier than 2012-03-13 | No Asignado [66.7%] | 5h |
| 17 | 1.1.4.1.2 | Conf Servidor de Base de Datos | 1d? | 2012-04-25 | 2012-04-26 |  | -209.75d | 0d | start no earlier than 2012-03-13 |  | 5h |
| 18 | 1.1.4.1.3 | Conf Repositorio Controlador de Versiones: SVN | 1.75d? | 2012-04-25 | 2012-04-27 |  | -210.5d | 0d | start no earlier than 2012-03-13 |  | 8h |
| 19 | 1.1.4.1.4 | Conf Reopositorio Maven | 1d? | 2012-04-26 | 2012-04-27 | 16 | -210.75d | 0d | start no earlier than 2012-03-14 |  | 5h |
| 20 | 1.1.4.1.5 | Configuracion de applicacion e control de proceso continuo | 20.75d? | 2012-03-14 | 2012-04-11 | 16 | -198.75d | 0d | finish no later than 2012-04-11 | No Asignado [66.7%] | 84h |
| 21 | 1.1.4.2 | Codificacion | 23.75d? | 2012-04-27 | 2012-05-31 | 15 | -210.75d | 0d | finish no earlier than 2012-05-09 | No Asignado [50%] | 97h |
| 22 | 1.1.4.3 | Codificacion de Pruebas Unitarias | 4.75d? | 2012-04-12 | 2012-04-18 | 21 | -175.25d | 0d | finish no later than 2012-04-18 |  | 24h |
| 23 | 1.2 | **Licitacion de Servicio de Transporte(Iteracion II)** | 243.25d? | 2012-04-26 | 2013-04-02 | 2 | -180.5d | 0d |  |  | 2864h |
| 24 | 1.2.1 | **Relevamiento** | 5.75d? | 2012-05-31 | 2012-06-08 |  | -206d | 0d |  |  | 91h |
| 25 | 1.2.1.1 | Entrevista con Clientes | 5d? | 2012-05-31 | 2012-06-07 |  | -205.25d | 0d | start no earlier than 2012-04-18 |  | 42h |
| 26 | 1.2.1.2 | Entrevista con Proveedores | 5.75d? | 2012-05-31 | 2012-06-08 |  | -206d | 0d | start no earlier than 2012-04-18 | No Asignado [66.7%] | 49h |

Notes:
- 2: Investigacion e implementacion del modelo de licitacion independientemente de la logica de negocio. Diseño y creacion de la arquitectura base y del motor de licitaciones
- 23: -Alcance: definicion e implementacion de la logica de negocio

| ID | WBS | Task | Duration | Start | Finish | Predecessors | Total slack | Free slack | Constraint | Resources | Work |
| --- | --- | --- | --- | --- | --- | --- | --- | --- | --- | --- | --- |
| 27 | 1.2.2 | **Analisis Funcional** | 38d? | 2012-04-26 | 2012-06-18 | 24 | -180.5d | 0d |  |  | 182h |
| 28 | 1.2.2.1 | Analisis de la informacion Relevada | 6.75d? | 2012-06-08 | 2012-06-18 |  | -206d | 0d | start no earlier than 2012-04-25 | No Asignado [66.7%] | 43h |
| 29 | 1.2.2.2 | Generacion de Casos de Uso | 10.75d? | 2012-04-26 | 2012-05-10 | 28 | -168d | 0d | finish no later than 2012-05-10 | No Asignado [66.7%] | 139h |
| 30 | 1.2.2.3 | Generacion de Diagramas de Interaccion | 14.75d? | 2012-05-04 | 2012-05-24 | 29 | -163.25d | 0d | finish no later than 2012-05-24 |  |  |
| 31 | 1.2.3 | Generacion de Contratos de Usabilidad | 10d? | 2012-06-19 | 2012-07-02 | 27 | 68.5d |  | start no earlier than 2012-05-11 | Representante Comercial [133.3%] | 82h |
| 32 | 1.2.4 | **Diseño** | 43.75d? | 2012-05-18 | 2012-07-18 | 27 | -158.5d | 0d |  |  | 434h |
| 33 | 1.2.4.1 | Diagrama de Clases | 19.75d? | 2012-06-19 | 2012-07-16 |  | -180.5d | 0d | start no earlier than 2012-05-11 | No Asignado [66.7%] | 223h |
| 34 | 1.2.4.2 | Diseño de Interfaz de Usuarios | 21.75d? | 2012-06-19 | 2012-07-18 |  | -43.75d | 0d | start no earlier than 2012-05-11 | Consultor Marketing | 168h |
| 35 | 1.2.4.3 | Validacion de Diseño | 17d? | 2012-05-18 | 2012-06-11 | 34 | -43.75d | 0d | start no later than 2012-05-18 | No Asignado [66.7%] | 43h |
| 36 | 1.2.5 | **Desarrollo** | 79.75d? | 2012-07-16 | 2012-11-05 | 33 | -180.5d | 0d |  |  | 1296h |
| 37 | 1.2.5.1 | **Codificacion** | 79.75d? | 2012-07-16 | 2012-11-05 |  | -180.5d | 0d |  |  | 1206h |
| 38 | 1.2.5.1.1 | Codificacion Backend e intefaz provisoria | 69.75d? | 2012-07-16 | 2012-10-22 |  | -180.5d | 0d | start no earlier than 2012-05-18 | Desarrollador I [133.3%] | 1042h |
| 39 | 1.2.5.1.2 | Integracion con diseño interfaz de usuario | 10d? | 2012-10-22 | 2012-11-05 | 38 | -179.75d | 0d | start no earlier than 2012-08-10 | Desarrollador I [133.3%] | 164h |
| 40 | 1.2.5.2 | Codificacion de Pruebas Unitarias | 5.75d? | 2012-08-10 | 2012-08-24 | 38 | -129d | 0d | finish no later than 2012-08-24 | Desarrollador I [133.3%] | 90h |
| 41 | 1.2.6 | **Test Integral** | 15.75d? | 2012-11-05 | 2012-11-27 | 36 | -179.75d | 0d |  |  | 129h |
| 42 | 1.2.6.1 | Creacion de Tests Selenium para pruebas multibavegador | 15d? | 2012-11-05 | 2012-11-26 |  | -179d | 0d | start no earlier than 2012-08-24 |  | 61h |
| 43 | 1.2.6.2 | Creacion de test de stress con JMETER y correciones a fines | 15.75d? | 2012-11-05 | 2012-11-27 |  | -179.75d | 0d | start no earlier than 2012-08-24 |  | 68h |
| 44 | 1.2.7 | **Pre Producción** | 60.75d? | 2012-09-17 | 2012-12-10 | 41 | -128.5d | 0d |  |  |  |
| 45 | 1.2.7.1 | Contratacion del Host | 1.75d? | 2012-11-27 | 2012-11-28 |  | -179.75d | 0d |  |  |  |
| 46 | 1.2.7.2 | Configuracion del Host | 60.75d? | 2012-09-17 | 2012-12-10 | 45 | -126.75d | 0d | finish no later than 2012-12-10 |  |  |
| 47 | 1.2.8 | Comercializacion: Busqueda de Proveedores | 60d? | 2012-12-10 | 2013-03-04 | 44 | -126.75d | 0d | start no earlier than 2012-09-18 | Administrador Sistema [133.3%] | 482h |
| 48 | 1.2.9 | **Puesta en Produccion** | 20.75d? | 2013-01-21 | 2013-02-19 | 47FS-30d | -126.75d | 0d |  |  |  |
| 49 | 1.2.9.1 | Contratacion del Host | 1d? | 2013-01-21 | 2013-01-22 |  | -107d | 0d |  |  |  |
| 50 | 1.2.9.2 | Configuracion del Host | 20.75d? | 2013-01-21 | 2013-02-19 | 41 | -126.75d | 0d | finish no earlier than 2012-11-27 |  |  |
| 51 | 1.2.10 | Campaña de Marketing | 20.75d? | 2013-02-19 | 2013-04-02 | 48 | -126.75d | 0d | finish no earlier than 2012-12-11 | Consultor Contable [133.3%] | 168h |

| ID | WBS | Task | Duration | Start | Finish | Predecessors | Total slack | Free slack | Constraint | Resources | Work |
| --- | --- | --- | --- | --- | --- | --- | --- | --- | --- | --- | --- |
| 52 | 1.3 | **Modulo de Optimizacion de Viajes(Iteracion III)** | 42.5d? | 2013-04-02 | 2013-05-30 | 23 | -126.75d | 0d |  |  | 615h |
| 53 | 1.3.1 | Relevamiento | 1.75d? | 2013-04-02 | 2013-04-03 |  | -126.75d | 0d | start no earlier than 2012-12-11 | No Asignado [66.7%] | 27h |
| 54 | 1.3.2 | **Analisis Funcional** | 4.75d? | 2013-04-04 | 2013-04-10 | 53 | -126.75d | 0d |  |  | 75h |
| 55 | 1.3.2.1 | Generacion de Casos de Uso | 4.75d? | 2013-04-04 | 2013-04-10 |  | -126.75d | 0d | start no earlier than 2012-12-12 | No Asignado [66.7%] | 75h |
| 56 | 1.3.3 | **Diseño** | 2.75d? | 2013-04-10 | 2013-04-15 | 54 | -126.75d | 0d |  |  | 43h |
| 57 | 1.3.3.1 | Generacion de Diagrama de clases | 2.75d? | 2013-04-10 | 2013-04-15 |  | -126.75d | 0d | start no earlier than 2012-12-18 | No Asignado [66.7%] | 43h |
| 58 | 1.3.4 | **Desarrollo** | 20.75d? | 2013-04-15 | 2013-05-14 | 56 | -126.75d | 0d |  |  | 414h |
| 59 | 1.3.4.1 | Codificacion | 20d? | 2013-04-15 | 2013-05-13 |  | -126d | 0d | start no earlier than 2012-12-20 | Desarrollador I [133.3%] | 324h |
| 60 | 1.3.4.2 | Test Unitario | 5.75d? | 2013-04-15 | 2013-05-14 |  | -126.75d | 0d | start no earlier than 2012-12-20 | Desarrollador I [133.3%] | 90h |
| 61 | 1.3.5 | **Test de Integracion** | 10.75d? | 2013-05-14 | 2013-05-28 | 58 | -126.75d | 0d |  |  | 44h |
| 62 | 1.3.5.1 | Test de usabilidad (Selenium) | 10.75d? | 2013-05-14 | 2013-05-28 |  | -126.75d | 0d | start no earlier than 2013-01-17 |  | 44h |
| 63 | 1.3.6 | Puesta en Produccion | 1.75d? | 2013-05-29 | 2013-05-30 | 61 | -126.75d | 0d | finish no earlier than 2013-02-01 | No Asignado [133.3%] | 12h |
| 64 | 1.4 | **Aplicacion Mobile(Iteracion IV)** | 136.5d? | 2013-04-11 | 2013-10-18 | 52 | -91d | 0d |  |  | 1728h |
| 65 | 1.4.1 | **Relevamiento** | 20.75d? | 2013-05-30 | 2013-06-28 |  | -126.75d | 0d |  |  | 415h |
| 66 | 1.4.1.1 | Investigacion de Api Android | 20d? | 2013-05-30 | 2013-06-27 |  | -126d | 0d | start no earlier than 2013-02-01 | No Asignado [66.7%] | 324h |
| 67 | 1.4.1.2 | Adaptacion del modelo de negocio a la tecnologia | 20.75d? | 2013-05-30 | 2013-06-28 |  | -126.75d | 0d | start no earlier than 2013-02-01 | No Asignado [66.7%] | 91h |
| 68 | 1.4.2 | **Analisis Funcional** | 4.75d? | 2013-06-28 | 2013-07-05 | 65 | -126.75d | 0d |  |  |  |
| 69 | 1.4.2.1 | Generacion de Casos de Uso | 4.75d? | 2013-06-28 | 2013-07-05 |  | -126.75d | 0d |  |  |  |
| 70 | 1.4.3 | **Diseño** | 15.75d? | 2013-07-05 | 2013-07-26 | 68 | -126.75d | 0d |  |  | 439h |
| 71 | 1.4.3.1 | Diseño arquitectura | 10d? | 2013-07-05 | 2013-07-19 |  | -121d | 0d | start no earlier than 2013-03-07 | No Asignado [66.7%] | 164h |
| 72 | 1.4.3.2 | Diseño de diagrama de Clases | 14.75d? | 2013-07-05 | 2013-07-25 |  | -125.75d | 0d | start no earlier than 2013-03-07 | No Asignado [66.7%] | 147h |
| 73 | 1.4.3.3 | Diseño de interfaz de Usuario | 15.75d? | 2013-07-05 | 2013-07-26 |  | -126.75d | 0d | start no earlier than 2013-03-07 | Consultor Marketing [133.3%] | 128h |
| 74 | 1.4.4 | **Desarrollo** | 126.75d? | 2013-04-11 | 2013-10-04 | 70 | -79d | 0d |  |  | 834h |
| 75 | 1.4.4.1 | Codificacion de Servicios de host | 49.75d? | 2013-07-29 | 2013-10-04 |  | -126.75d | 0d | start no earlier than 2013-03-28 | Desarrollador I [133.3%] | 482h |
| 76 | 1.4.4.2 | Condificacion de la applicacion mobile | 47.75d? | 2013-04-11 | 2013-06-17 | 75 | -126.75d | 0d | finish no later than 2013-06-17 | Diseñador | 352h |
| 77 | 1.4.5 | Test de Integracion, prueba de servicios con Jmeter | 8.75d? | 2013-10-04 | 2013-10-17 | 74 | 0d |  | finish no earlier than 2013-06-18 |  | 36h |
| 78 | 1.4.6 | Puesta en Produccion | 1d? | 2013-10-17 | 2013-10-18 | 77 | 0d |  | start no earlier than 2013-06-18 | No Asignado [50%] | 4h |

Notes:
- 52: Alcance: desarrollo de las funcionalidades de optimizacion de viajes
- 64: Alcance: desarrollo de la aplicacion mobile
