# OSFLETES

Schedule from MS Project XML, 2012-02-01 to 2013-06-18.

## Calendars

- Estandar: Mon-Fri 08:00-12:00, 13:00-17:00; Sat-Sun off.

## Resources

| Resource |
| --- |
| No Asignado |
| Dubra, Gaston |
| Kochman, Matias |
| Lischetti, Mariano |
| Pegue, Ignacion |
| Desarrollador I |
| Desarrollador II |
| Administrador Sistema |
| Representante Comercial |
| Consultor Legal |
| Consultor Contable |
| Consultor Marketing |
| Diseñador |
| Desarrollador Android |

## Schedule

| ID | WBS | Task | Duration | Start | Finish | Predecessors | Total slack | Free slack | Constraint | Resources |
| --- | --- | --- | --- | --- | --- | --- | --- | --- | --- | --- |
| 1 | 1 | **OSFLETES** | 360d | 2012-02-01 | 2013-06-18 |  | 0d |  |  |  |
| 2 | 1.1 | **Motor de Licitaciones(Iteracion I)** | 55d | 2012-02-01 | 2012-04-17 |  | 0d |  | start no earlier than 2012-02-01 |  |
| 3 | 1.1.1 | **Relevamiento** | 2d | 2012-02-01 | 2012-02-02 |  | 0d |  |  |  |
| 4 | 1.1.1.1 | Investigacion del Modelo de Licitacion | 2d | 2012-02-01 | 2012-02-02 |  | 0d |  |  | Dubra, Gaston [50%]; Kochman, Matias [50%]; Lischetti, Mariano [50%]; Pegue, Ignacion [50%] |
| 5 | 1.1.2 | **Analisis Funcional y Tecnico** | 15d | 2012-02-03 | 2012-02-23 | 3 | 0d |  |  |  |
| 6 | 1.1.2.1 | Analisis de la informacion Relevada | 1d | 2012-02-03 | 2012-02-03 |  | 0d |  |  | Dubra, Gaston [50%]; Kochman, Matias [50%]; Lischetti, Mariano [50%]; Pegue, Ignacion [50%] |
| 7 | 1.1.2.2 | Generacion de los Diagramas De Flujos | 6d | 2012-02-06 | 2012-02-13 | 6 | 0d |  |  | Dubra, Gaston [50%]; Kochman, Matias [50%]; Lischetti, Mariano [50%]; Pegue, Ignacion [50%] |
| 8 | 1.1.2.3 | Generacion de los Casos de Uso | 7d | 2012-02-14 | 2012-02-22 | 7 | 0d |  |  | Dubra, Gaston [50%]; Kochman, Matias [50%]; Lischetti, Mariano [50%]; Pegue, Ignacion [50%] |
| 9 | 1.1.2.4 | Definicion de las Tecnologias a usar | 1d | 2012-02-23 | 2012-02-23 | 8 | 0d |  |  | Dubra, Gaston [50%]; Kochman, Matias [50%]; Lischetti, Mariano [50%]; Pegue, Ignacion [50%] |
| 10 | 1.1.3 | **Diseño** | 12d | 2012-02-24 | 2012-03-12 | 5 | 0d |  |  |  |
| 11 | 1.1.3.1 | Diseño de Arquitectura | 6d | 2012-02-24 | 2012-03-02 |  | 0d |  |  | Dubra, Gaston [50%]; Kochman, Matias [50%]; Lischetti, Mariano [50%]; Pegue, Ignacion [50%] |
| 12 | 1.1.3.2 | Diseño de estructura de datos | 1d | 2012-02-24 | 2012-02-24 |  | 1100d | 0d |  | Dubra, Gaston [50%]; Kochman, Matias [50%]; Lischetti, Mariano [50%]; Pegue, Ignacion [50%] |
| 13 | 1.1.3.3 | Diagrama de Clases | 6d | 2012-03-05 | 2012-03-12 | 11 | 0d |  |  | Pegue, Ignacion [50%]; Dubra, Gaston [50%]; Kochman, Matias [50%]; Lischetti, Mariano [50%] |
| 14 | 1.1.4 | **Desarrollo** | 26d | 2012-03-13 | 2012-04-17 | 10 | 0d |  |  |  |
| 15 | 1.1.4.1 | **Configuracion de Ambiente de desarrollo** | 2d | 2012-03-13 | 2012-03-14 |  | 0d |  |  |  |
| 16 | 1.1.4.1.1 | Conf Servidor de Aplicaciones Apache Tomcat | 1d | 2012-03-13 | 2012-03-13 |  | 0d |  |  | Dubra, Gaston [50%] |
| 17 | 1.1.4.1.2 | Conf Servidor de Base de Datos | 1d | 2012-03-13 | 2012-03-13 |  | 100d | 0d |  | Kochman, Matias [50%] |
| 18 | 1.1.4.1.3 | Conf Repositorio Controlador de Versiones: SVN | 1d | 2012-03-13 | 2012-03-13 |  | 100d | 0d |  | Lischetti, Mariano [50%] |
| 19 | 1.1.4.1.4 | Conf Reopositorio Maven | 1d | 2012-03-14 | 2012-03-14 | 16 | 0d |  |  | Pegue, Ignacion [50%] |
| 20 | 1.1.4.1.5 | Configuracion de applicacion e control de proceso continuo | 1d | 2012-03-14 | 2012-03-14 | 16 | 0d |  |  | Dubra, Gaston [50%] |
| 21 | 1.1.4.2 | Codificacion | 20d | 2012-03-15 | 2012-04-11 | 15 | 0d |  |  | Dubra, Gaston [50%]; Kochman, Matias [25%] |
| 22 | 1.1.4.3 | Codificacion de Pruebas Unitarias | 4d | 2012-04-12 | 2012-04-17 | 21 | 0d |  |  | Kochman, Matias [50%] |
| 23 | 1.2 | **Licitacion de Servicio de Transporte(Iteracion II)** | 169d | 2012-04-18 | 2012-12-10 | 2 | 0d |  |  |  |
| 24 | 1.2.1 | **Relevamiento** | 5d | 2012-04-18 | 2012-04-24 |  | 0d |  |  |  |
| 25 | 1.2.1.1 | Entrevista con Clientes | 5d | 2012-04-18 | 2012-04-24 |  | 0d |  |  | Kochman, Matias [50%]; Pegue, Ignacion [50%] |
| 26 | 1.2.1.2 | Entrevista con Proveedores | 5d | 2012-04-18 | 2012-04-24 |  | 0d |  |  | Dubra, Gaston [50%]; Lischetti, Mariano [50%] |

Notes:
- 2: Investigacion e implementacion del modelo de licitacion independientemente de la logica de negocio. Diseño y creacion de la arquitectura base y del motor de licitaciones
- 23: -Alcance: definicion e implementacion de la logica de negocio

| ID | WBS | Task | Duration | Start | Finish | Predecessors | Total slack | Free slack | Resources |
| --- | --- | --- | --- | --- | --- | --- | --- | --- | --- |
| 27 | 1.2.2 | **Analisis Funcional** | 12d | 2012-04-25 | 2012-05-10 | 24 | 0d |  |  |
| 28 | 1.2.2.1 | Analisis de la informacion Relevada | 1d | 2012-04-25 | 2012-04-25 |  | 0d |  | Dubra, Gaston [50%]; Kochman, Matias [50%]; Lischetti, Mariano [50%]; Pegue, Ignacion [50%] |
| 29 | 1.2.2.2 | Generacion de Casos de Uso | 6d | 2012-04-26 | 2012-05-03 | 28 | 0d |  | Dubra, Gaston [50%]; Lischetti, Mariano [50%]; Kochman, Matias [50%]; Pegue, Ignacion [50%] |
| 30 | 1.2.2.3 | Generacion de Diagramas de Interaccion | 5d | 2012-05-04 | 2012-05-10 | 29 | 0d |  |  |
| 31 | 1.2.3 | Generacion de Contratos de Usabilidad | 10d | 2012-05-11 | 2012-05-24 | 27 | 14200d | 0d | Consultor Legal |
| 32 | 1.2.4 | **Diseño** | 22d | 2012-05-11 | 2012-06-11 | 27 | 13000d | 0d |  |
| 33 | 1.2.4.1 | Diagrama de Clases | 5d | 2012-05-11 | 2012-05-17 |  | 0d |  | Dubra, Gaston [50%]; Kochman, Matias [50%]; Lischetti, Mariano [50%]; Pegue, Ignacion [50%] |
| 34 | 1.2.4.2 | Diseño de Interfaz de Usuarios | 20d | 2012-05-11 | 2012-06-07 |  | 13000d | 0d | Diseñador |
| 35 | 1.2.4.3 | Validacion de Diseño | 2d | 2012-06-08 | 2012-06-11 | 34 | 13000d | 0d | Dubra, Gaston [50%]; Kochman, Matias [50%]; Lischetti, Mariano [50%]; Pegue, Ignacion [50%] |
| 36 | 1.2.5 | **Desarrollo** | 70d | 2012-05-18 | 2012-08-23 | 33 | 0d |  |  |
| 37 | 1.2.5.1 | **Codificacion** | 70d | 2012-05-18 | 2012-08-23 |  | 0d |  |  |
| 38 | 1.2.5.1.1 | Codificacion Backend e intefaz provisoria | 60d | 2012-05-18 | 2012-08-09 |  | 0d |  | Desarrollador I; Desarrollador II |
| 39 | 1.2.5.1.2 | Integracion con diseño interfaz de usuario | 10d | 2012-08-10 | 2012-08-23 | 38 | 0d |  | Desarrollador I; Desarrollador II |
| 40 | 1.2.5.2 | Codificacion de Pruebas Unitarias | 5d | 2012-08-10 | 2012-08-16 | 38 | 500d | 0d | Desarrollador I; Desarrollador II |
| 41 | 1.2.6 | **Test Integral** | 15d | 2012-08-24 | 2012-09-13 | 36 | 0d |  |  |
| 42 | 1.2.6.1 | Creacion de Tests Selenium para pruebas multibavegador | 15d | 2012-08-24 | 2012-09-13 |  | 0d |  | Pegue, Ignacion [50%] |
| 43 | 1.2.6.2 | Creacion de test de stress con JMETER y correciones a fines | 15d | 2012-08-24 | 2012-09-13 |  | 0d |  | Kochman, Matias [50%] |
| 44 | 1.2.7 | **Pre Producción** | 2d | 2012-09-14 | 2012-09-17 | 41 | 0d |  |  |
| 45 | 1.2.7.1 | Contratacion del Host | 1d | 2012-09-14 | 2012-09-14 |  | 0d |  |  |
| 46 | 1.2.7.2 | Configuracion del Host | 1d | 2012-09-17 | 2012-09-17 | 45 | 0d |  |  |
| 47 | 1.2.8 | Comercializacion: Busqueda de Proveedores | 60d | 2012-09-18 | 2012-12-10 | 44 | 0d |  | Representante Comercial |
| 48 | 1.2.9 | **Puesta en Produccion** | 1d | 2012-10-30 | 2012-10-30 | 47FS-30d | 900d | 0d |  |
| 49 | 1.2.9.1 | Contratacion del Host | 1d | 2012-10-30 | 2012-10-30 |  | 900d | 0d |  |
| 50 | 1.2.9.2 | Configuracion del Host | 1d | 2012-10-30 | 2012-10-30 | 41 | 900d | 0d |  |
| 51 | 1.2.10 | Campaña de Marketing | 20d | 2012-10-31 | 2012-11-27 | 48 | 900d | 0d | Consultor Marketing |

| ID | WBS | Task | Duration | Start | Finish | Predecessors | Total slack | Free slack | Resources |
| --- | --- | --- | --- | --- | --- | --- | --- | --- | --- |
| 52 | 1.3 | **Modulo de Optimizacion de Viajes(Iteracion III)** | 38d | 2012-12-11 | 2013-01-31 | 23 | 0d |  |  |
| 53 | 1.3.1 | Relevamiento | 1d | 2012-12-11 | 2012-12-11 |  | 0d |  | Dubra, Gaston [50%]; Kochman, Matias [50%]; Lischetti, Mariano [50%]; Pegue, Ignacion [50%] |
| 54 | 1.3.2 | **Analisis Funcional** | 4d | 2012-12-12 | 2012-12-17 | 53 | 0d |  |  |
| 55 | 1.3.2.1 | Generacion de Casos de Uso | 4d | 2012-12-12 | 2012-12-17 |  | 0d |  | Dubra, Gaston [50%]; Kochman, Matias [50%]; Lischetti, Mariano [50%]; Pegue, Ignacion [50%] |
| 56 | 1.3.3 | **Diseño** | 2d | 2012-12-18 | 2012-12-19 | 54 | 0d |  |  |
| 57 | 1.3.3.1 | Generacion de Diagrama de clases | 2d | 2012-12-18 | 2012-12-19 |  | 0d |  | Dubra, Gaston [50%]; Kochman, Matias [50%]; Lischetti, Mariano [50%]; Pegue, Ignacion [50%] |
| 58 | 1.3.4 | **Desarrollo** | 20d | 2012-12-20 | 2013-01-16 | 56 | 0d |  |  |
| 59 | 1.3.4.1 | Codificacion | 20d | 2012-12-20 | 2013-01-16 |  | 0d |  | Desarrollador I; Desarrollador II |
| 60 | 1.3.4.2 | Test Unitario | 5d | 2012-12-20 | 2012-12-26 |  | 1500d | 0d | Desarrollador I; Desarrollador II |
| 61 | 1.3.5 | **Test de Integracion** | 10d | 2013-01-17 | 2013-01-30 | 58 | 0d |  |  |
| 62 | 1.3.5.1 | Test de usabilidad (Selenium) | 10d | 2013-01-17 | 2013-01-30 |  | 0d |  | Pegue, Ignacion [50%] |
| 63 | 1.3.6 | Puesta en Produccion | 1d | 2013-01-31 | 2013-01-31 | 61 | 0d |  | Dubra, Gaston [50%] |
| 64 | 1.4 | **Aplicacion Mobile(Iteracion IV)** | 98d | 2013-02-01 | 2013-06-18 | 52 | 0d |  |  |
| 65 | 1.4.1 | **Relevamiento** | 20d | 2013-02-01 | 2013-02-28 |  | 0d |  |  |
| 66 | 1.4.1.1 | Investigacion de Api Android | 20d | 2013-02-01 | 2013-02-28 |  | 0d |  | Dubra, Gaston [50%]; Kochman, Matias [50%]; Lischetti, Mariano [50%]; Pegue, Ignacion [50%] |
| 67 | 1.4.1.2 | Adaptacion del modelo de negocio a la tecnologia | 5d | 2013-02-01 | 2013-02-07 |  | 1500d | 0d | Dubra, Gaston [50%]; Kochman, Matias [50%]; Lischetti, Mariano [50%]; Pegue, Ignacion [50%] |
| 68 | 1.4.2 | **Analisis Funcional** | 4d | 2013-03-01 | 2013-03-06 | 65 | 0d |  |  |
| 69 | 1.4.2.1 | Generacion de Casos de Uso | 4d | 2013-03-01 | 2013-03-06 |  | 0d |  |  |
| 70 | 1.4.3 | **Diseño** | 15d | 2013-03-07 | 2013-03-27 | 68 | 0d |  |  |
| 71 | 1.4.3.1 | Diseño arquitectura | 10d | 2013-03-07 | 2013-03-20 |  | 500d | 0d | Dubra, Gaston [50%]; Kochman, Matias [50%]; Lischetti, Mariano [50%]; Pegue, Ignacion [50%] |
| 72 | 1.4.3.2 | Diseño de diagrama de Clases | 2d | 2013-03-07 | 2013-03-08 |  | 1300d | 0d | Dubra, Gaston [50%]; Kochman, Matias [50%]; Pegue, Ignacion [50%]; Lischetti, Mariano [50%] |
| 73 | 1.4.3.3 | Diseño de interfaz de Usuario | 15d | 2013-03-07 | 2013-03-27 |  | 0d |  | Diseñador |
| 74 | 1.4.4 | **Desarrollo** | 50d | 2013-03-28 | 2013-06-05 | 70 | 0d |  |  |
| 75 | 1.4.4.1 | Codificacion de Servicios de host | 10d | 2013-03-28 | 2013-04-10 |  | 0d |  | Desarrollador I; Desarrollador II |
| 76 | 1.4.4.2 | Condificacion de la applicacion mobile | 40d | 2013-04-11 | 2013-06-05 | 75 | 0d |  | Desarrollador Android |
| 77 | 1.4.5 | Test de Integracion, prueba de servicios con Jmeter | 8d | 2013-06-06 | 2013-06-17 | 74 | 0d |  | Kochman, Matias [50%] |
| 78 | 1.4.6 | Puesta en Produccion | 1d | 2013-06-18 | 2013-06-18 | 77 | 0d |  | Dubra, Gaston [50%] |

Notes:
- 52: Alcance: desarrollo de las funcionalidades de optimizacion de viajes
- 64: Alcance: desarrollo de la aplicacion mobile
